# ProyectoGPR_save

Schedule from MS Project, 2020-11-16 to 2022-05-16, costs in €.

## Calendars

- Estándar: Mon-Fri 09:00-13:00, 15:00-19:00; Sat-Sun off.

## Resources

| Resource | Rate |
| --- | --- |
| Director de Proyecto | 93.75 |
| Desarrollador Junior (30 Personas) | 281.25 |
| Desarrollador Senior (10 Personas) | 218.75 |
| Consultoría COVID19 (1 persona) | 12.5 |
| Formadores del equipo de desarrollo (3 personas) | 46.88 |
| Personal de mantenimiento (20 personas) | 275 |
| Formadores del equipo de mantenimiento (2 personas) | 31.25 |
| Arquitecto Software (1 persona) | 62.5 |
| Analista de negocio (1 persona) | 46.88 |
| Ingeniero de pruebas (5 personas) | 109.38 |
| Equipo de marketing (10 personas) | 106.25 |
| Jurista (3 personas) | 46.88 |
| Personal de recursos humanos (10 personas) | 81.25 |
| Representante del fabricante de vehículos |  |
| Representante del fabricante de estaciones de recarga |  |
| Representante EMT |  |
| Representante del ayuntamiento |  |

## Schedule

| ID | WBS | Task | Type | Duration | Start | Finish | Predecessors | Total slack | Resources | Work | Cost | Identificador |
| --- | --- | --- | --- | --- | --- | --- | --- | --- | --- | --- | --- | --- |
| 1 | 1 | **Formación** |  | 380d | 2020-11-16 | 2022-04-29 |  | 0d |  | 707.6h | 85,294.4 | 1.2 |
| 2 | 1.1 | Selección de los miembros del equipo de desarrollo | manual | 22d | 2020-11-16 | 2020-12-15 |  |  | Director de Proyecto [20%]; Personal de recursos humanos (10 personas) | 211.2h | 17,600 | A1-WP-1.2.1 |
| 3 | 1.2 | Asegurar la obtención de conocimientos necesarios para desarrolladores | manual | 13d | 2020-12-16 | 2021-01-01 | 2 |  | Desarrollador Senior (10 Personas); Director de Proyecto [10%]; Formadores del equipo de desarrollo (3 personas); Jurista (3 personas) [25%] | 244.4h | 29,819.4 | A2-WP-1.2.2 |
| 4 | 1.3 | Formación del equipo del mantenimiento | manual | 15d | 2022-04-11 | 2022-04-29 |  |  | Director de Proyecto [10%]; Formadores del equipo de mantenimiento (2 personas); Personal de mantenimiento (20 personas) | 252h | 37,875 | A3-WP-1.2.3 |
| 5 | 2 | **Documento de la Infraestructura** |  | 10d | 2021-01-04 | 2021-01-15 |  | 0d |  | 356h | 8,844 | 1.3 |
| 6 | 2.1 | Definición de requisitos de infraestructura | manual | 10d | 2021-01-04 | 2021-01-15 | 3 |  | Arquitecto Software (1 persona) [50%]; Jurista (3 personas) [50%]; Representante del ayuntamiento [25%]; Representante del fabricante de estaciones de recarga; Representante EMT [50%] | 210h | 4,375.2 | A4-WP-1.3.1 |
| 7 | 2.2 | Selección de los modelos de vehículo a utilizar | manual | 5d | 2021-01-11 | 2021-01-15 | 8 |  | Director de Proyecto [10%]; Representante del ayuntamiento [25%]; Representante del fabricante de vehículos; Representante EMT [50%] | 74h | 375 | A5-WP-1.3.2 |
| 8 | 2.3 | Designación de las zonas de carga y aparcamiento | manual | 5d | 2021-01-04 | 2021-01-08 | 3 |  | Director de Proyecto [10%]; Jurista (3 personas) [25%]; Representante del ayuntamiento [25%] | 24h | 843.8 | A6-WP-1.3.3 |
| 9 | 2.4 | Definición de los sistemas informáticos necesarios | manual | 10d | 2021-01-04 | 2021-01-15 | 3 |  | Arquitecto Software (1 persona) [50%]; Director de Proyecto [10%] | 48h | 3,250 | A7-WP-1.3.4 |
| 10 | 3 | **Documento de ingenriería de APP de usuario** |  | 30d | 2021-01-18 | 2021-02-26 |  | 0d |  | 888h | 101,250.6 | 1.4 |
| 11 | 3.1 | Requisitos de software | manual | 15d | 2021-01-18 | 2021-02-05 | 6, 7, 9 |  | Analista de negocio (1 persona); Desarrollador Senior (10 Personas); Personal de mantenimiento (20 personas); Representante del ayuntamiento [25%] | 390h | 64,875.6 | A8-WP-1.4.1 |
| 12 | 3.2 | Estudio de los sistemas actuales | manual | 5d | 2021-02-01 | 2021-02-05 |  |  | Director de Proyecto [10%]; Representante del ayuntamiento [25%]; Representante EMT | 54h | 375 | A9-WP-1.4.2 |
| 13 | 3.3 | Plan de integración con los sistemas actuales | manual | 15d | 2021-02-08 | 2021-02-26 | 11, 12 |  | Arquitecto Software (1 persona) [50%]; Desarrollador Senior (10 Personas) [50%]; Director de Proyecto [10%]; Representante del ayuntamiento [25%]; Representante EMT | 282h | 18,000 | A10-WP-1.4.3 |
| 14 | 3.4 | Plan de soporte futuro | manual | 15d | 2021-02-08 | 2021-02-26 | 11, 12 |  | Arquitecto Software (1 persona) [50%]; Desarrollador Senior (10 Personas) [50%]; Director de Proyecto [10%]; Representante del ayuntamiento [25%] | 162h | 18,000 | A11-WP-1.4.4 |
| 15 | 4 | **Aplicación Usuario Final** |  | 295d | 2021-03-01 | 2022-04-15 |  | 0d |  | 4265.68h | 745,980.48 | 1.5 |
| 16 | 4.1 | Diseño del software | manual | 38d | 2021-03-01 | 2021-04-21 | 13, 14 |  | Arquitecto Software (1 persona); Desarrollador Senior (10 Personas) | 608h | 85,500 | A12-WP-1.5.1 |
| 17 | 4.2 | Desarrollo del sistema | manual | 170d | 2021-04-22 | 2021-12-15 | 16 |  | Arquitecto Software (1 persona); Desarrollador Junior (30 Personas); Desarrollador Senior (10 Personas) [50%] | 3400h | 616,250 | A13-WP-1.5.2 |
| 18 | 4.3 | Pruebas | manual | 12d | 2021-12-16 | 2021-12-31 | 17 |  | Arquitecto Software (1 persona) [33%]; Desarrollador Junior (30 Personas); Ingeniero de pruebas (5 personas) | 223.68h | 39,480.48 | A14-WP-1.5.3 |
| 19 | 4.4 | Despliegue | manual | 5d | 2022-04-11 | 2022-04-15 | 31, 18 |  | Desarrollador Senior (10 Personas) [50%]; Director de Proyecto [10%]; Representante del ayuntamiento [25%] | 34h | 4,750 | A15-WP-1.5.4 |
| 20 | 5 | **Documento de Ingeniería de App de Mantenimiento** |  | 23d | 2021-12-01 | 2021-12-31 |  | 0d |  | 629.36h | 65,160.44 | 1.6 |
| 21 | 5.1 | Requisitos del software (mantenimiento) | manual | 11d | 2021-12-01 | 2021-12-15 |  |  | Analista de negocio (1 persona); Desarrollador Senior (10 Personas) [50%]; Personal de mantenimiento (20 personas); Representante del ayuntamiento [25%] | 242h | 37,950.44 | A16-WP-1.6.1 |
| 22 | 5.2 | Estudio de los sistemas actuales (mantenimiento) | manual | 6d | 2021-12-08 | 2021-12-15 |  |  | Director de Proyecto [10%]; Representante del ayuntamiento [25%]; Representante EMT | 64.8h | 450 | A17-WP-1.6.2 |
| 23 | 5.3 | Plan de integración con sistemas actuales (mantenimiento) | manual | 12d | 2021-12-16 | 2021-12-31 | 21, 22 |  | Arquitecto Software (1 persona) [33%]; Desarrollador Senior (10 Personas) [50%]; Director de Proyecto [10%]; Representante del ayuntamiento [25%]; Representante EMT | 209.28h | 13,380 | A18-WP-1.6.3 |
| 24 | 5.4 | Plan de soporte futuro (mantenimiento) | manual | 12d | 2021-12-16 | 2021-12-31 | 21, 22 |  | Arquitecto Software (1 persona) [33%]; Desarrollador Senior (10 Personas) [50%]; Director de Proyecto [10%]; Representante del ayuntamiento [25%] | 113.28h | 13,380 | A19-WP-1.6.4 |

| ID | WBS | Task | Type | Duration | Start | Finish | Predecessors | Total slack | Resources | Work | Cost | Identificador |
| --- | --- | --- | --- | --- | --- | --- | --- | --- | --- | --- | --- | --- |
| 25 | 6 | **Aplicación Mantenimiento** |  | 75d | 2022-01-03 | 2022-04-15 |  | 0d |  | 1174h | 229,750.2 | 1.7 |
| 26 | 6.1 | Diseño del Software (mantenimiento) | manual | 10d | 2022-01-03 | 2022-01-14 | 18, 23, 24 |  | Arquitecto Software (1 persona); Desarrollador Senior (10 Personas) | 160h | 22,500 | A20-WP-1.7.1 |
| 27 | 6.2 | Desarrollo del sistema de mantenimiento | manual | 55d | 2022-01-17 | 2022-04-01 | 26 |  | Arquitecto Software (1 persona) [50%]; Desarrollador Junior (30 Personas); Desarrollador Senior (10 Personas) [50%] | 880h | 185,625 | A21-WP-1.7.2 |
| 28 | 6.3 | Pruebas (mantenimiento) | manual | 5d | 2022-04-04 | 2022-04-08 | 27 |  | Arquitecto Software (1 persona) [50%]; Desarrollador Junior (30 Personas); Ingeniero de pruebas (5 personas) | 100h | 16,875.2 | A22-WP-1.7.3 |
| 29 | 6.4 | Despliegue (mantenimiento) | manual | 5d | 2022-04-11 | 2022-04-15 | 28, 31 |  | Desarrollador Senior (10 Personas) [50%]; Director de Proyecto [10%]; Representante del ayuntamiento [25%] | 34h | 4,750 | A23-WP-1.7.4 |
| 30 | 7 | **Infraestructura** |  | 29d | 2022-03-01 | 2022-04-08 |  | 0d |  | 1040.8h | 106,825 | 1.8 |
| 31 | 7.1 | Instalación de sistemas informáticos | manual | 29d | 2022-03-01 | 2022-04-08 |  |  | Arquitecto Software (1 persona) [50%]; Desarrollador Senior (10 Personas) [50%]; Personal de mantenimiento (20 personas); Representante del ayuntamiento [10%]; Representante del fabricante de estaciones de recarga [20%]; Representante del fabricante de vehículos [20%]; Representante EMT | 812h | 96,425 | A24-WP-1.8.1 |
| 32 | 7.2 | Establecimientos de zonas de carga y aparcamiento | manual | 13d | 2022-03-01 | 2022-03-17 |  |  | Director de Proyecto [10%]; Representante del ayuntamiento [10%]; Representante del fabricante de estaciones de recarga [80%] | 104h | 975 | A25-WP-1.8.2 |
| 33 | 7.3 | Refuerzo del equipo de recogida | manual | 13d | 2022-03-01 | 2022-03-17 |  |  | Director de Proyecto [10%]; Personal de recursos humanos (10 personas); Representante del ayuntamiento [10%] | 124.8h | 9,425 | A26-WP-1.8.3 |
| 34 | 8 | **Vehículos** |  | 10d | 2022-03-15 | 2022-03-28 |  | 0d |  | 168h | 4,500.4 | 1.9 |
| 35 | 8.1 | Adquisición de vehículos | manual | 10d | 2022-03-15 | 2022-03-28 |  |  | Director de Proyecto [10%]; Representante del ayuntamiento [10%]; Representante del fabricante de vehículos [80%] | 80h | 750 | A27-WP-1.9.1 |
| 36 | 8.2 | Distribución de vehículos por la ciudad | manual | 10d | 2022-03-15 | 2022-03-28 |  |  | Analista de negocio (1 persona); Representante del ayuntamiento [10%] | 88h | 3,750.4 | A28-WP-1.9.2 |
| 37 | 9 | **Evaluación Sistema** |  | 20d | 2022-04-18 | 2022-05-13 |  | 0d |  | 364h | 33,501 | 1.10 |
| 38 | 9.1 | Pruebas del sistema | manual | 15d | 2022-04-18 | 2022-05-06 | 19, 29, 32, 36 |  | Arquitecto Software (1 persona); Ingeniero de pruebas (5 personas) | 240h | 20,625.6 | A29-WP-1.10.1 |
| 39 | 9.2 | Documentación final del proyecto | manual | 5d | 2022-05-09 | 2022-05-13 | 38 |  | Analista de negocio (1 persona); Desarrollador Senior (10 Personas); Director de Proyecto [10%]; Jurista (3 personas) | 124h | 12,875.4 | A30-WP-1.10.2 |
| 40 | 10 | **Sistema Final** |  | 391d | 2020-11-16 | 2022-05-16 |  | 0d |  | 3842h | 190,372.56 | 1.11 |
| 41 | 10.1 | Publicación del sistema | manual | 1d | 2022-05-16 | 2022-05-16 | 39 |  | Director de Proyecto [50%]; Representante del ayuntamiento | 12h | 375 | A31-WP-1.11.1 |
| 42 | 10.2 | Plan de Marketing | manual | 391d | 2020-11-16 | 2022-05-16 |  |  | Director de Proyecto [25%]; Equipo de marketing (10 personas) [25%]; Jurista (3 personas) [25%]; Representante del ayuntamiento [50%] | 3830h | 189,997.56 | A32-WP-1.11.2 |
